Schedule from MS Project, 2019-07-29 to 2019-11-30.

## Calendars

- 标准: Mon-Fri 08:00-12:00, 13:00-17:00; Sat-Sun off.

## Resources

| Resource |
| --- |
| 吴秦令 |
| 周辉 |
| 孙俊林 |
| 侯森 |
| 林梅 |
| 黄明海 |
| 瞿博 |
| 杨怀东 |
| 李园华 |
| 谈伟敏 |
| 李康辉 |
| Denny |
| 王威 |
| 肖巍 |
| 用户 |
| Abby |
| 蔡婷婷 |

## Schedule

| ID | WBS | Task | Type | Duration | Start | Finish | Resources | Work |
| --- | --- | --- | --- | --- | --- | --- | --- | --- |
| 1 | 1 | 基础数据准备 | manual | 20d | 2019-08-21 | 2019-09-17 | 吴秦令 | 160h |
| 2 | 2 | 优先级为"1"的看板需求确认 | manual | 5d | 2019-07-29 | 2019-08-02 | 周辉 | 40h |
| 3 | 3 | 优先级为"1"的看板设计文档 | manual | 6d | 2019-07-30 | 2019-08-06 | 孙俊林 | 48h |
| 4 | 4 | 优先级为"3"的看板需求确认 | manual | 15d | 2019-08-12 | 2019-08-30 | 周辉 | 120h |
| 5 | 5 | 优先级为"3"的看板设计文档 | manual | 15d | 2019-08-12 | 2019-08-30 | 孙俊林 | 120h |
| 7 | 6 | 全项目计划定稿 | manual | 7d | 2019-08-01 | 2019-08-09 | 周辉 | 56h |
| 8 | 7 | QMP文档输出 | manual | 1d | 2019-08-13 | 2019-08-13 | 周辉 | 8h |
| 9 | 8 | 项目启动会 | manual | 2d | 2019-08-16 | 2019-08-19 | 周辉 | 16h |
| 11 | 9 | **ISIT关键&所有应用服务可用性看板** |  | 5d | 2019-07-30 | 2019-08-05 | 孙俊林; 侯森; 林梅; 黄明海 | 4880h |
| 12 | 9.1 | 数据库表设计 | manual | 1d | 2019-07-30 | 2019-07-30 | 孙俊林 | 8h |
| 13 | 9.2 | SCOM接口需求沟通 | manual | 1d | 2019-07-30 | 2019-07-30 | 周辉 | 8h |
| 14 | 9.3 | SCOM接口实现 | manual | 13d | 2019-08-12 | 2019-08-28 | 瞿博; 杨怀东 | 208h |
| 15 | 9.4 | 报表设计开发 | manual | 2d | 2019-07-30 | 2019-07-31 | 侯森 | 16h |
| 16 | 9.5 | 报表集成到EP | manual | 1d | 2019-08-16 | 2019-08-16 | 林梅 | 8h |
| 17 | 9.6 | 功能测试+报告 | manual | 1d | 2019-08-22 | 2019-08-22 | 林梅 | 8h |
| 18 | 9.7 | 用户测试 | manual | 1d | 2019-08-29 | 2019-08-29 | 李园华 | 8h |
| 20 | 9.8 | **ISIT用户服务SLA看板** |  | 5d | 2019-08-01 | 2019-08-07 | 孙俊林; 侯森; 林梅; 黄明海 | 312h |
| 21 | 9.8.1 | 数据库表设计 | manual | 1d | 2019-08-01 | 2019-08-01 | 孙俊林 | 8h |
| 22 | 9.8.2 | ITSM接口需求沟通 | manual | 1d | 2019-08-01 | 2019-08-01 | 周辉 | 8h |
| 23 | 9.8.3 | ITSM数据视图 | manual | 5d | 2019-08-01 | 2019-08-07 | 谈伟敏; 李康辉 | 80h |
| 24 | 9.8.4 | ITSM数据视图调用集成 | manual | 2d | 2019-08-01 | 2019-08-02 | 侯森 | 16h |
| 25 | 9.8.5 | 报表设计开发 | manual | 2d | 2019-08-02 | 2019-08-05 | 侯森 | 16h |
| 26 | 9.8.6 | 报表集成到EP | manual | 1d | 2019-08-23 | 2019-08-23 | 林梅 | 8h |
| 27 | 9.8.7 | 功能测试+报告 | manual | 1d | 2019-08-22 | 2019-08-22 | 林梅 | 8h |
| 28 | 9.8.8 | 用户测试 | manual | 1d | 2019-08-29 | 2019-08-29 | 谈伟敏 | 8h |

Notes:
- 18: 待交付
- 28: 已交付

| ID | WBS | Task | Type | Duration | Start | Finish | Resources | Work |
| --- | --- | --- | --- | --- | --- | --- | --- | --- |
| 30 | 9.9 | **ISIT用户网络可用性&性能看板** |  | 5d | 2019-08-06 | 2019-08-12 | 孙俊林; 林梅; 侯森; 黄明海 | 296h |
| 31 | 9.9.1 | 数据库表设计 | manual | 1d | 2019-08-06 | 2019-08-06 | 孙俊林 | 8h |
| 32 | 9.9.2 | Zabbix接口需求沟通 | manual | 1d | 2019-08-06 | 2019-08-06 | 周辉 | 8h |
| 33 | 9.9.3 | Zabbix接口实现 | manual | 5d | 2019-08-06 | 2019-08-12 | 孙俊林; 王威 | 80h |
| 34 | 9.9.4 | 报表设计开发 | manual | 2d | 2019-08-06 | 2019-08-07 | 侯森 | 16h |
| 35 | 9.9.5 | 报表集成到EP | manual | 1d | 2019-08-20 | 2019-08-20 | 林梅 | 8h |
| 36 | 9.9.6 | 功能测试+报告 | manual | 1d | 2019-08-26 | 2019-08-26 | 林梅 | 8h |
| 37 | 9.9.7 | 用户测试 | manual | 1d | 2019-08-29 | 2019-08-29 | 吴秦令 | 8h |
| 39 | 9.10 | **ISIT关键项目看板** |  | 6d | 2019-08-08 | 2019-08-15 | 孙俊林; 侯森; 林梅; 黄明海 | 296h |
| 40 | 9.10.1 | 数据库表设计 | manual | 1d | 2019-08-08 | 2019-08-08 | 孙俊林 | 8h |
| 41 | 9.10.2 | 数据迁移 | manual | 6d | 2019-08-08 | 2019-08-15 | 孙俊林 | 48h |
| 42 | 9.10.3 | 报表设计开发 | manual | 3d | 2019-08-08 | 2019-08-12 | 侯森 | 24h |
| 43 | 9.10.4 | 报表集成到EP | manual | 1d | 2019-08-21 | 2019-08-21 | 林梅 | 8h |
| 44 | 9.10.5 | 功能测试+报告 | manual | 1d | 2019-08-27 | 2019-08-27 | 林梅 | 8h |
| 45 | 9.10.6 | 用户测试 | manual | 1d | 2019-08-29 | 2019-08-29 | 蔡婷婷 | 8h |
| 47 | 9.11 | **ISIT资源数据模糊/条件查询** |  | 10d | 2019-08-12 | 2019-08-23 | 瞿博; 黄明海 | 264h |
| 48 | 9.11.1 | 创建所有数据表 | manual | 1d | 2019-08-12 | 2019-08-12 | 瞿博 | 8h |
| 49 | 9.11.2 | 设计查询方案 | manual | 2d | 2019-08-13 | 2019-08-14 | 瞿博 | 16h |
| 50 | 9.11.3 | 前端页面开发 | manual | 2d | 2019-08-15 | 2019-08-16 | 瞿博 | 16h |
| 51 | 9.11.4 | 后端数据绑定 | manual | 5d | 2019-08-19 | 2019-08-23 | 瞿博 | 40h |
| 52 | 9.11.5 | 功能测试+报告 | manual | 2d | 2019-08-26 | 2019-08-27 | 黄明海 | 16h |
| 53 | 9.11.6 | 用户测试 | manual | 1d | 2019-08-30 | 2019-08-30 | 吴秦令 | 8h |
| 55 | 9.12 | **ISIT KPI数据看板** |  | 2d | 2019-08-29 | 2019-08-30 | 孙俊林; 林梅; 侯森; 黄明海 | 152h |
| 56 | 9.12.1 | 数据库表设计 | manual | 1d | 2019-08-29 | 2019-08-29 | 孙俊林 | 8h |
| 57 | 9.12.2 | ITSM接口需求沟通 | manual | 1d | 2019-08-29 | 2019-08-29 | 周辉 | 8h |
| 58 | 9.12.3 | ITSM数据视图 | manual | 1d | 2019-08-29 | 2019-08-29 | 谈伟敏; 李康辉 | 16h |
| 59 | 9.12.4 | ITSM数据视图调用集成 | manual | 2d | 2019-08-29 | 2019-08-30 | 侯森 | 16h |
| 60 | 9.12.5 | 报表设计开发 | manual | 2d | 2019-08-29 | 2019-08-30 | 侯森 | 16h |
| 61 | 9.12.6 | 报表集成到EP | manual | 1d | 2019-09-10 | 2019-09-10 | 林梅 | 8h |
| 62 | 9.12.7 | 功能测试 | manual | 1d | 2019-09-12 | 2019-09-12 | 林梅 | 8h |
| 63 | 9.12.8 | 用户测试 | manual | 1d | 2019-09-20 | 2019-09-20 | Denny | 8h |

Notes:
- 37: 待交付
- 45: 已交付
- 52: 已完成测试，待交付
- 55: 进行中

| ID | WBS | Task | Type | Duration | Start | Finish | Resources | Work |
| --- | --- | --- | --- | --- | --- | --- | --- | --- |
| 65 | 9.13 | **ISIT应用&能力资源使用情况看板** |  | 2d | 2019-09-02 | 2019-09-03 | 孙俊林; 林梅; 侯森; 黄明海 | 152h |
| 66 | 9.13.1 | 数据库表设计 | manual | 1d | 2019-09-02 | 2019-09-02 | 孙俊林 | 8h |
| 67 | 9.13.2 | ITSM接口需求沟通 | manual | 1d | 2019-09-02 | 2019-09-02 | 周辉 | 8h |
| 68 | 9.13.3 | ITSM数据视图 | manual | 1d | 2019-09-02 | 2019-09-02 | 谈伟敏; 李康辉 | 16h |
| 69 | 9.13.4 | ITSM数据视图调用集成 | manual | 2d | 2019-09-02 | 2019-09-03 | 侯森 | 16h |
| 70 | 9.13.5 | 报表设计开发 | manual | 2d | 2019-09-02 | 2019-09-03 | 侯森 | 16h |
| 71 | 9.13.6 | 报表集成到EP | manual | 1d | 2019-09-10 | 2019-09-10 | 林梅 | 8h |
| 72 | 9.13.7 | 功能测试 | manual | 1d | 2019-09-16 | 2019-09-16 | 林梅 | 8h |
| 73 | 9.13.8 | 用户测试 | manual | 1d | 2019-09-20 | 2019-09-20 | Denny | 8h |
| 75 | 9.14 | **ISIT人力资源使用情况看板** |  | 2d | 2019-09-04 | 2019-09-05 | 孙俊林; 林梅; 侯森; 黄明海 | 152h |
| 76 | 9.14.1 | 数据库表设计 | manual | 1d | 2019-09-04 | 2019-09-04 | 孙俊林 | 8h |
| 77 | 9.14.2 | ITSM接口需求沟通 | manual | 1d | 2019-09-04 | 2019-09-04 | 周辉 | 8h |
| 78 | 9.14.3 | ITSM数据视图 | manual | 1d | 2019-09-04 | 2019-09-04 | 谈伟敏; 李康辉 | 16h |
| 79 | 9.14.4 | ITSM数据视图调用集成 | manual | 2d | 2019-09-04 | 2019-09-05 | 侯森 | 16h |
| 80 | 9.14.5 | 报表设计开发 | manual | 2d | 2019-09-04 | 2019-09-05 | 侯森 | 16h |
| 81 | 9.14.6 | 报表集成到EP | manual | 1d | 2019-09-11 | 2019-09-11 | 林梅 | 8h |
| 82 | 9.14.7 | 功能测试 | manual | 1d | 2019-09-17 | 2019-09-17 | 林梅 | 8h |
| 83 | 9.14.8 | 用户测试 | manual | 1d | 2019-09-20 | 2019-09-20 | Denny | 8h |
| 85 | 9.15 | **ISIT网络可用性&性能看板** |  | 2d | 2019-09-06 | 2019-09-09 | 孙俊林; 林梅; 侯森; 黄明海 | 136h |
| 86 | 9.15.1 | 数据库表设计 | manual | 1d | 2019-09-06 | 2019-09-06 | 孙俊林 | 8h |
| 87 | 9.15.2 | Zabbix接口需求沟通 | manual | 1d | 2019-09-06 | 2019-09-06 | 周辉 | 8h |
| 88 | 9.15.3 | Zabbix接口实现 | manual | 1d | 2019-09-06 | 2019-09-06 | 孙俊林; 王威 | 16h |
| 89 | 9.15.4 | 报表设计开发 | manual | 2d | 2019-09-06 | 2019-09-09 | 侯森 | 16h |
| 90 | 9.15.5 | 报表集成到EP | manual | 1d | 2019-09-11 | 2019-09-11 | 林梅 | 8h |
| 91 | 9.15.6 | 功能测试 | manual | 1d | 2019-09-18 | 2019-09-18 | 林梅 | 8h |
| 92 | 9.15.7 | 用户测试 | manual | 1d | 2019-09-20 | 2019-09-20 | 吴秦令 | 8h |

| ID | WBS | Task | Type | Duration | Start | Finish | Resources | Work |
| --- | --- | --- | --- | --- | --- | --- | --- | --- |
| 94 | 9.16 | **ISIT服务器可用性&性能看板** |  | 2d | 2019-09-10 | 2019-09-11 | 孙俊林; 林梅; 侯森; 黄明海 | 136h |
| 95 | 9.16.1 | 数据库表设计 | manual | 1d | 2019-09-10 | 2019-09-10 | 孙俊林 | 8h |
| 96 | 9.16.2 | SCOM接口需求沟通 | manual | 1d | 2019-09-10 | 2019-09-10 | 周辉 | 8h |
| 97 | 9.16.3 | SCOM接口实现 | manual | 1d | 2019-09-10 | 2019-09-10 | 孙俊林; 杨怀东 | 16h |
| 98 | 9.16.4 | 报表设计开发 | manual | 2d | 2019-09-10 | 2019-09-11 | 侯森 | 16h |
| 99 | 9.16.5 | 报表集成到EP | manual | 1d | 2019-09-12 | 2019-09-12 | 林梅 | 8h |
| 100 | 9.16.6 | 功能测试 | manual | 1d | 2019-09-19 | 2019-09-19 | 林梅 | 8h |
| 101 | 9.16.7 | 用户测试 | manual | 1d | 2019-09-20 | 2019-09-20 | 吴秦令 | 8h |
| 103 | 9.17 | **A-IDC管理界面 3个** |  | 44d | 2019-07-30 | 2019-09-27 |  | 2560h |
| 104 | 9.17.1 | **A01UPS资源表** |  | 4d | 2019-08-05 | 2019-08-08 | 林梅 | 80h |
| 105 | 9.17.1.1 | 前端页面开发 | manual | 1d | 2019-08-05 | 2019-08-05 | 林梅 | 8h |
| 106 | 9.17.1.2 | 增删改查功能开发 | manual | 2d | 2019-08-06 | 2019-08-07 | 林梅 | 16h |
| 107 | 9.17.1.3 | 配置 | manual | 1d | 2019-08-08 | 2019-08-08 | 林梅 | 8h |
| 108 | 9.17.1.4 | 交叉测试+报告 | manual | 1d | 2019-09-09 | 2019-09-09 | 黄明海 | 8h |
| 109 | 9.17.1.5 | 用户测试 | manual | 1d | 2019-09-20 | 2019-09-20 | 吴秦令 | 8h |
| 110 | 9.17.2 | **A02机柜资源表** |  | 3d | 2019-08-09 | 2019-08-13 | 林梅 | 64h |
| 111 | 9.17.2.1 | 前端页面开发 | manual | 1d | 2019-08-09 | 2019-08-09 | 林梅 | 8h |
| 112 | 9.17.2.2 | 增删改查功能开发 | manual | 1d | 2019-08-12 | 2019-08-12 | 林梅 | 8h |
| 113 | 9.17.2.3 | 配置 | manual | 1d | 2019-08-13 | 2019-08-13 | 林梅 | 8h |
| 114 | 9.17.2.4 | 交叉测试+报告 | manual | 1d | 2019-10-10 | 2019-10-10 | 黄明海 | 8h |
| 115 | 9.17.2.5 | 用户测试 | manual | 1d | 2019-09-20 | 2019-09-20 | 吴秦令 | 8h |
| 116 | 9.17.3 | **A03机房布局图** |  | 2d | 2019-08-14 | 2019-08-15 | 林梅 | 56h |
| 117 | 9.17.3.1 | 前端页面开发 | manual | 1d | 2019-08-14 | 2019-08-14 | 林梅 | 8h |
| 118 | 9.17.3.2 | 增删改查功能开发 | manual | 1d | 2019-08-14 | 2019-08-14 | 林梅 | 8h |
| 119 | 9.17.3.3 | 配置 | manual | 1d | 2019-08-15 | 2019-08-15 | 林梅 | 8h |
| 120 | 9.17.3.4 | 交叉测试+报告 | manual | 1d | 2019-09-11 | 2019-09-11 | 黄明海 | 8h |
| 121 | 9.17.3.5 | 用户测试 | manual | 1d | 2019-09-20 | 2019-09-20 | 吴秦令 | 8h |

Notes:
- 104: 已开发，待测试
- 110: 已开发，待测试
- 116: 已开发，待测试

| ID | WBS | Task | Type | Duration | Start | Finish | Resources | Work |
| --- | --- | --- | --- | --- | --- | --- | --- | --- |
| 123 | 9.17.4 | **B-网络管理界面 6个** |  | 18d | 2019-07-30 | 2019-08-22 |  | 288h |
| 124 | 9.17.4.1 | **B01网络分类表** |  | 1d | 2019-08-29 | 2019-08-29 | 瞿博 | 48h |
| 125 | 9.17.4.1.1 | 前端页面开发 | manual | 1d | 2019-08-29 | 2019-08-29 | 瞿博 | 8h |
| 126 | 9.17.4.1.2 | 增删改查功能开发 | manual | 1d | 2019-08-29 | 2019-08-29 | 瞿博 | 8h |
| 127 | 9.17.4.1.3 | 配置 | manual | 1d | 2019-08-29 | 2019-08-29 | 瞿博 | 8h |
| 128 | 9.17.4.1.4 | 交叉测试+报告 | manual | 1d | 2019-09-12 | 2019-09-12 | 黄明海 | 8h |
| 129 | 9.17.4.1.5 | 用户测试 | manual | 1d | 2019-09-20 | 2019-09-20 | 吴秦令 | 8h |
| 130 | 9.17.4.2 | **B02网络资源表** |  | 1d | 2019-08-30 | 2019-08-30 | 瞿博 | 48h |
| 131 | 9.17.4.2.1 | 前端页面开发 | manual | 1d | 2019-08-30 | 2019-08-30 | 瞿博 | 8h |
| 132 | 9.17.4.2.2 | 增删改查功能开发 | manual | 1d | 2019-08-30 | 2019-08-30 | 瞿博 | 8h |
| 133 | 9.17.4.2.3 | 配置 | manual | 1d | 2019-08-30 | 2019-08-30 | 瞿博 | 8h |
| 134 | 9.17.4.2.4 | 交叉测试+报告 | manual | 1d | 2019-09-16 | 2019-09-16 | 黄明海 | 8h |
| 135 | 9.17.4.2.5 | 用户测试 | manual | 1d | 2019-09-20 | 2019-09-20 | 吴秦令 | 8h |
| 136 | 9.17.4.3 | **B03网络端口表** |  | 1d | 2019-09-02 | 2019-09-02 | 瞿博 | 48h |
| 137 | 9.17.4.3.1 | 前端页面开发 | manual | 1d | 2019-09-02 | 2019-09-02 | 瞿博 | 8h |
| 138 | 9.17.4.3.2 | 增删改查功能开发 | manual | 1d | 2019-09-02 | 2019-09-02 | 瞿博 | 8h |
| 139 | 9.17.4.3.3 | 配置 | manual | 1d | 2019-09-02 | 2019-09-02 | 瞿博 | 8h |
| 140 | 9.17.4.3.4 | 交叉测试+报告 | manual | 1d | 2019-09-17 | 2019-09-17 | 黄明海 | 8h |
| 141 | 9.17.4.3.5 | 用户测试 | manual | 1d | 2019-09-20 | 2019-09-20 | 吴秦令 | 8h |
| 142 | 9.17.4.4 | **B04公网IP表** |  | 1d | 2019-09-03 | 2019-09-03 | 瞿博 | 48h |
| 143 | 9.17.4.4.1 | 前端页面开发 | manual | 1d | 2019-09-03 | 2019-09-03 | 瞿博 | 8h |
| 144 | 9.17.4.4.2 | 增删改查功能开发 | manual | 1d | 2019-09-03 | 2019-09-03 | 瞿博 | 8h |
| 145 | 9.17.4.4.3 | 配置 | manual | 1d | 2019-09-03 | 2019-09-03 | 瞿博 | 8h |
| 146 | 9.17.4.4.4 | 交叉测试+报告 | manual | 1d | 2019-09-18 | 2019-09-18 | 黄明海 | 8h |
| 147 | 9.17.4.4.5 | 用户测试 | manual | 1d | 2019-09-20 | 2019-09-20 | 吴秦令 | 8h |

Notes:
- 124: 已开发，待测试

| ID | WBS | Task | Type | Duration | Start | Finish | Resources | Work |
| --- | --- | --- | --- | --- | --- | --- | --- | --- |
| 148 | 9.17.4.5 | **B05内网IP表** |  | 1d | 2019-09-04 | 2019-09-04 | 瞿博 | 48h |
| 149 | 9.17.4.5.1 | 前端页面开发 | manual | 1d | 2019-09-04 | 2019-09-04 | 瞿博 | 8h |
| 150 | 9.17.4.5.2 | 增删改查功能开发 | manual | 1d | 2019-09-04 | 2019-09-04 | 瞿博 | 8h |
| 151 | 9.17.4.5.3 | 配置 | manual | 1d | 2019-09-04 | 2019-09-04 | 瞿博 | 8h |
| 152 | 9.17.4.5.4 | 交叉测试+报告 | manual | 1d | 2019-09-19 | 2019-09-19 | 黄明海 | 8h |
| 153 | 9.17.4.5.5 | 用户测试 | manual | 1d | 2019-09-20 | 2019-09-20 | 吴秦令 | 8h |
| 154 | 9.17.4.6 | **B06内外网IP对应表** |  | 1d | 2019-09-05 | 2019-09-05 | 瞿博 | 48h |
| 155 | 9.17.4.6.1 | 前端页面开发 | manual | 1d | 2019-09-05 | 2019-09-05 | 瞿博 | 8h |
| 156 | 9.17.4.6.2 | 增删改查功能开发 | manual | 1d | 2019-09-05 | 2019-09-05 | 瞿博 | 8h |
| 157 | 9.17.4.6.3 | 配置 | manual | 1d | 2019-09-05 | 2019-09-05 | 瞿博 | 8h |
| 158 | 9.17.4.6.4 | 交叉测试+报告 | manual | 1d | 2019-09-20 | 2019-09-20 | 黄明海 | 8h |
| 159 | 9.17.4.6.5 | 用户测试 | manual | 1d | 2019-09-25 | 2019-09-25 | 吴秦令 | 8h |
| 161 | 9.17.5 | **C-服务器&存储管理界面 6个** |  | 22d | 2019-07-30 | 2019-08-28 |  | 288h |
| 162 | 9.17.5.1 | **C01服务器类型** |  | 1d | 2019-08-28 | 2019-08-28 | 林梅 | 48h |
| 163 | 9.17.5.1.1 | 前端页面开发 | manual | 1d | 2019-08-28 | 2019-08-28 | 林梅 | 8h |
| 164 | 9.17.5.1.2 | 增删改查功能开发 | manual | 1d | 2019-08-28 | 2019-08-28 | 林梅 | 8h |
| 165 | 9.17.5.1.3 | 配置 | manual | 1d | 2019-08-28 | 2019-08-28 | 林梅 | 8h |
| 166 | 9.17.5.1.4 | 交叉测试+报告 | manual | 1d | 2019-09-23 | 2019-09-23 | 黄明海 | 8h |
| 167 | 9.17.5.1.5 | 用户测试 | manual | 1d | 2019-09-25 | 2019-09-25 | 吴秦令 | 8h |
| 168 | 9.17.5.2 | **C02服务器类硬件清单** |  | 1d | 2019-08-29 | 2019-08-29 | 林梅 | 48h |
| 169 | 9.17.5.2.1 | 前端页面开发 | manual | 1d | 2019-08-29 | 2019-08-29 | 林梅 | 8h |
| 170 | 9.17.5.2.2 | 增删改查功能开发 | manual | 1d | 2019-08-29 | 2019-08-29 | 林梅 | 8h |
| 171 | 9.17.5.2.3 | 配置 | manual | 1d | 2019-08-29 | 2019-08-29 | 林梅 | 8h |
| 172 | 9.17.5.2.4 | 交叉测试+报告 | manual | 1d | 2019-09-24 | 2019-09-24 | 黄明海 | 8h |
| 173 | 9.17.5.2.5 | 用户测试 | manual | 1d | 2019-09-25 | 2019-09-25 | 吴秦令 | 8h |

| ID | WBS | Task | Type | Duration | Start | Finish | Resources | Work |
| --- | --- | --- | --- | --- | --- | --- | --- | --- |
| 174 | 9.17.5.3 | **C03服务器资源池** |  | 1d | 2019-08-30 | 2019-08-30 | 林梅 | 48h |
| 175 | 9.17.5.3.1 | 前端页面开发 | manual | 1d | 2019-08-30 | 2019-08-30 | 林梅 | 8h |
| 176 | 9.17.5.3.2 | 增删改查功能开发 | manual | 1d | 2019-08-30 | 2019-08-30 | 林梅 | 8h |
| 177 | 9.17.5.3.3 | 配置 | manual | 1d | 2019-08-30 | 2019-08-30 | 林梅 | 8h |
| 178 | 9.17.5.3.4 | 交叉测试+报告 | manual | 1d | 2019-09-25 | 2019-09-25 | 黄明海 | 8h |
| 179 | 9.17.5.3.5 | 用户测试 | manual | 1d | 2019-09-30 | 2019-09-30 | 吴秦令 | 8h |
| 180 | 9.17.5.4 | **C04应用单元** |  | 1d | 2019-09-02 | 2019-09-02 | 林梅 | 48h |
| 181 | 9.17.5.4.1 | 前端页面开发 | manual | 1d | 2019-09-02 | 2019-09-02 | 林梅 | 8h |
| 182 | 9.17.5.4.2 | 增删改查功能开发 | manual | 1d | 2019-09-02 | 2019-09-02 | 林梅 | 8h |
| 183 | 9.17.5.4.3 | 配置 | manual | 1d | 2019-09-02 | 2019-09-02 | 林梅 | 8h |
| 184 | 9.17.5.4.4 | 交叉测试+报告 | manual | 1d | 2019-09-26 | 2019-09-26 | 黄明海 | 8h |
| 185 | 9.17.5.4.5 | 用户测试 | manual | 1d | 2019-09-30 | 2019-09-30 | 吴秦令 | 8h |
| 186 | 9.17.5.5 | **C05存储设备清单** |  | 1d | 2019-09-03 | 2019-09-03 | 林梅 | 48h |
| 187 | 9.17.5.5.1 | 前端页面开发 | manual | 1d | 2019-09-03 | 2019-09-03 | 林梅 | 8h |
| 188 | 9.17.5.5.2 | 增删改查功能开发 | manual | 1d | 2019-09-03 | 2019-09-03 | 林梅 | 8h |
| 189 | 9.17.5.5.3 | 配置 | manual | 1d | 2019-09-03 | 2019-09-03 | 林梅 | 8h |
| 190 | 9.17.5.5.4 | 交叉测试+报告 | manual | 1d | 2019-09-27 | 2019-09-27 | 黄明海 | 8h |
| 191 | 9.17.5.5.5 | 用户测试 | manual | 1d | 2019-09-30 | 2019-09-30 | 吴秦令 | 8h |
| 192 | 9.17.5.6 | **C06公有云资源** |  | 1d | 2019-09-04 | 2019-09-04 | 林梅 | 48h |
| 193 | 9.17.5.6.1 | 前端页面开发 | manual | 1d | 2019-09-04 | 2019-09-04 | 林梅 | 8h |
| 194 | 9.17.5.6.2 | 增删改查功能开发 | manual | 1d | 2019-09-04 | 2019-09-04 | 林梅 | 8h |
| 195 | 9.17.5.6.3 | 配置 | manual | 1d | 2019-09-04 | 2019-09-04 | 林梅 | 8h |
| 196 | 9.17.5.6.4 | 交叉测试+报告 | manual | 1d | 2019-09-29 | 2019-09-29 | 黄明海 | 8h |
| 197 | 9.17.5.6.5 | 用户测试 | manual | 1d | 2019-09-30 | 2019-09-30 | 吴秦令 | 8h |

| ID | WBS | Task | Type | Duration | Start | Finish | Resources | Work |
| --- | --- | --- | --- | --- | --- | --- | --- | --- |
| 199 | 9.17.6 | **D-应用管理界面 4个** |  | 15d | 2019-07-30 | 2019-08-19 |  | 192h |
| 200 | 9.17.6.1 | **D01应用组件类型** |  | 1d | 2019-09-06 | 2019-09-06 | 瞿博 | 48h |
| 201 | 9.17.6.1.1 | 前端页面开发 | manual | 1d | 2019-09-06 | 2019-09-06 | 瞿博 | 8h |
| 202 | 9.17.6.1.2 | 增删改查功能开发 | manual | 1d | 2019-09-06 | 2019-09-06 | 瞿博 | 8h |
| 203 | 9.17.6.1.3 | 配置 | manual | 1d | 2019-09-06 | 2019-09-06 | 瞿博 | 8h |
| 204 | 9.17.6.1.4 | 交叉测试+报告 | manual | 1d | 2019-09-25 | 2019-09-25 | 林梅 | 8h |
| 205 | 9.17.6.1.5 | 用户测试 | manual | 1d | 2019-09-30 | 2019-09-30 | 吴秦令 | 8h |
| 206 | 9.17.6.2 | **D02应用清单** |  | 1d | 2019-09-09 | 2019-09-09 | 瞿博 | 48h |
| 207 | 9.17.6.2.1 | 前端页面开发 | manual | 1d | 2019-09-09 | 2019-09-09 | 瞿博 | 8h |
| 208 | 9.17.6.2.2 | 增删改查功能开发 | manual | 1d | 2019-09-09 | 2019-09-09 | 瞿博 | 8h |
| 209 | 9.17.6.2.3 | 配置 | manual | 1d | 2019-09-09 | 2019-09-09 | 瞿博 | 8h |
| 210 | 9.17.6.2.4 | 交叉测试+报告 | manual | 1d | 2019-09-26 | 2019-09-26 | 林梅 | 8h |
| 211 | 9.17.6.2.5 | 用户测试 | manual | 1d | 2019-09-30 | 2019-09-30 | 吴秦令 | 8h |
| 212 | 9.17.6.3 | **D03应用组件-内** |  | 1d | 2019-09-10 | 2019-09-10 | 瞿博 | 48h |
| 213 | 9.17.6.3.1 | 前端页面开发 | manual | 1d | 2019-09-10 | 2019-09-10 | 瞿博 | 8h |
| 214 | 9.17.6.3.2 | 增删改查功能开发 | manual | 1d | 2019-09-10 | 2019-09-10 | 瞿博 | 8h |
| 215 | 9.17.6.3.3 | 配置 | manual | 1d | 2019-09-10 | 2019-09-10 | 瞿博 | 8h |
| 216 | 9.17.6.3.4 | 交叉测试+报告 | manual | 1d | 2019-09-27 | 2019-09-27 | 林梅 | 8h |
| 217 | 9.17.6.3.5 | 用户测试 | manual | 1d | 2019-09-30 | 2019-09-30 | 吴秦令 | 8h |
| 218 | 9.17.6.4 | **D04应用组件-公有云** |  | 1d | 2019-09-11 | 2019-09-11 | 瞿博 | 48h |
| 219 | 9.17.6.4.1 | 前端页面开发 | manual | 1d | 2019-09-11 | 2019-09-11 | 瞿博 | 8h |
| 220 | 9.17.6.4.2 | 增删改查功能开发 | manual | 1d | 2019-09-11 | 2019-09-11 | 瞿博 | 8h |
| 221 | 9.17.6.4.3 | 配置 | manual | 1d | 2019-09-11 | 2019-09-11 | 瞿博 | 8h |
| 222 | 9.17.6.4.4 | 交叉测试+报告 | manual | 1d | 2019-09-29 | 2019-09-29 | 林梅 | 8h |
| 223 | 9.17.6.4.5 | 用户测试 | manual | 1d | 2019-09-30 | 2019-09-30 | 吴秦令 | 8h |

| ID | WBS | Task | Type | Duration | Start | Finish | Resources | Work |
| --- | --- | --- | --- | --- | --- | --- | --- | --- |
| 225 | 9.17.7 | **E-人力&能力管理界面 3个** |  | 6d | 2019-07-30 | 2019-08-06 |  | 160h |
| 226 | 9.17.7.1 | **E01能力清单** |  | 1d | 2019-09-12 | 2019-09-12 | 瞿博 | 48h |
| 227 | 9.17.7.1.1 | 前端页面开发 | manual | 1d | 2019-09-12 | 2019-09-12 | 瞿博 | 8h |
| 228 | 9.17.7.1.2 | 增删改查功能开发 | manual | 1d | 2019-09-12 | 2019-09-12 | 瞿博 | 8h |
| 229 | 9.17.7.1.3 | 配置 | manual | 1d | 2019-09-12 | 2019-09-12 | 瞿博 | 8h |
| 230 | 9.17.7.1.4 | 交叉测试+报告 | manual | 1d | 2019-09-30 | 2019-09-30 | 黄明海 | 8h |
| 231 | 9.17.7.1.5 | 用户测试 | manual | 1d | 2019-10-08 | 2019-10-08 | 吴秦令 | 8h |
| 232 | 9.17.7.2 | **E02人员能力匹配** |  | 2d | 2019-09-16 | 2019-09-17 | 瞿博 | 56h |
| 233 | 9.17.7.2.1 | 前端页面开发 | manual | 1d | 2019-09-16 | 2019-09-16 | 瞿博 | 8h |
| 234 | 9.17.7.2.2 | 增删改查功能开发 | manual | 1d | 2019-09-16 | 2019-09-16 | 瞿博 | 8h |
| 235 | 9.17.7.2.3 | 配置 | manual | 1d | 2019-09-17 | 2019-09-17 | 瞿博 | 8h |
| 236 | 9.17.7.2.4 | 交叉测试+报告 | manual | 1d | 2019-10-08 | 2019-10-08 | 黄明海 | 8h |
| 237 | 9.17.7.2.5 | 用户测试 | manual | 1d | 2019-10-09 | 2019-10-09 | 吴秦令 | 8h |
| 238 | 9.17.7.3 | **E03关键应用能力匹配** |  | 2d | 2019-09-18 | 2019-09-19 | 瞿博 | 56h |
| 239 | 9.17.7.3.1 | 前端页面开发 | manual | 1d | 2019-09-18 | 2019-09-18 | 瞿博 | 8h |
| 240 | 9.17.7.3.2 | 增删改查功能开发 | manual | 1d | 2019-09-18 | 2019-09-18 | 瞿博 | 8h |
| 241 | 9.17.7.3.3 | 配置 | manual | 1d | 2019-09-19 | 2019-09-19 | 瞿博 | 8h |
| 242 | 9.17.7.3.4 | 交叉测试+报告 | manual | 1d | 2019-10-09 | 2019-10-09 | 黄明海 | 8h |
| 243 | 9.17.7.3.5 | 用户测试 | manual | 1d | 2019-10-10 | 2019-10-10 | 吴秦令 | 8h |
| 245 | 9.17.8 | **关键项目管理后台** |  | 1d | 2019-09-06 | 2019-09-06 | 林梅 | 48h |
| 246 | 9.17.8.1 | 前端页面开发 | manual | 1d | 2019-09-06 | 2019-09-06 | 林梅 | 8h |
| 247 | 9.17.8.2 | 增删改查功能开发 | manual | 1d | 2019-09-06 | 2019-09-06 | 林梅 | 8h |
| 248 | 9.17.8.3 | 配置 | manual | 1d | 2019-09-06 | 2019-09-06 | 林梅 | 8h |
| 249 | 9.17.8.4 | 交叉测试+报告 | manual | 1d | 2019-10-10 | 2019-10-10 | 黄明海 | 8h |
| 250 | 9.17.8.5 | 用户测试 | manual | 1d | 2019-10-11 | 2019-10-11 | 吴秦令 | 8h |

| ID | WBS | Task | Type | Duration | Start | Finish | Resources | Work |
| --- | --- | --- | --- | --- | --- | --- | --- | --- |
| 252 | 9.17.9 | **ITSM问题管理后台** |  | 1d | 2019-09-09 | 2019-09-09 | 林梅 | 48h |
| 253 | 9.17.9.1 | 前端页面开发 | manual | 1d | 2019-09-09 | 2019-09-09 | 林梅 | 8h |
| 254 | 9.17.9.2 | 增删改查功能开发 | manual | 1d | 2019-09-09 | 2019-09-09 | 林梅 | 8h |
| 255 | 9.17.9.3 | 配置 | manual | 1d | 2019-09-09 | 2019-09-09 | 林梅 | 8h |
| 256 | 9.17.9.4 | 交叉测试+报告 | manual | 1d | 2019-10-11 | 2019-10-11 | 黄明海 | 8h |
| 257 | 9.17.9.5 | 用户测试 | manual | 1d | 2019-10-12 | 2019-10-12 | 吴秦令 | 8h |
| 259 | 9.17.10 | **F-其他界面 3个** |  | 71d | 2019-07-30 | 2019-11-05 |  | 1336h |
| 260 | 9.17.10.1 | **一级资源后台** |  | 1d | 2019-08-28 | 2019-08-28 | 黄明海 | 48h |
| 261 | 9.17.10.1.1 | **前端页面开发** |  | 1d | 2019-08-28 | 2019-08-28 | 黄明海 | 40h |
| 262 | 9.17.10.1.1.1 | 增删改查功能开发 | manual | 1d | 2019-08-28 | 2019-08-28 | 黄明海 | 8h |
| 263 | 9.17.10.1.1.2 | 配置 | manual | 1d | 2019-08-28 | 2019-08-28 | 黄明海 | 8h |
| 264 | 9.17.10.1.1.3 | 交叉测试+报告 | manual | 1d | 2019-09-20 | 2019-09-20 | 林梅 | 8h |
| 265 | 9.17.10.1.1.4 | 用户测试 | manual | 1d | 2019-09-25 | 2019-09-25 | 吴秦令 | 8h |
| 266 | 9.17.10.2 | **二级资源后台** |  | 1d | 2019-08-29 | 2019-08-29 | 黄明海 | 1288h |
| 267 | 9.17.10.2.1 | 前端页面开发 | manual | 1d | 2019-08-29 | 2019-08-29 | 黄明海 | 8h |
| 268 | 9.17.10.2.2 | 增删改查功能开发 | manual | 1d | 2019-08-29 | 2019-08-29 | 黄明海 | 8h |
| 269 | 9.17.10.2.3 | 配置 | manual | 1d | 2019-08-29 | 2019-08-29 | 黄明海 | 8h |
| 270 | 9.17.10.2.4 | 交叉测试+报告 | manual | 1d | 2019-09-23 | 2019-09-23 | 林梅 | 8h |
| 271 | 9.17.10.2.5 | 用户测试 | manual | 1d | 2019-09-25 | 2019-09-25 | 吴秦令 | 8h |
| 272 | 9.17.10.2.6 | **名次管理后台** |  | 3d | 2019-09-04 | 2019-09-06 | 黄明海 | 64h |
| 273 | 9.17.10.2.6.1 | 前端页面开发 | manual | 1d | 2019-09-04 | 2019-09-04 | 黄明海 | 8h |
| 274 | 9.17.10.2.6.2 | 增删改查功能开发 | manual | 1d | 2019-09-05 | 2019-09-05 | 黄明海 | 8h |
| 275 | 9.17.10.2.6.3 | 配置 | manual | 1d | 2019-09-06 | 2019-09-06 | 黄明海 | 8h |
| 276 | 9.17.10.2.6.4 | 交叉测试+报告 | manual | 1d | 2019-09-24 | 2019-09-24 | 林梅 | 8h |
| 277 | 9.17.10.2.6.5 | 用户测试 | manual | 1d | 2019-09-25 | 2019-09-25 | 吴秦令 | 8h |

| ID | WBS | Task | Type | Duration | Start | Finish | Resources | Work |
| --- | --- | --- | --- | --- | --- | --- | --- | --- |
| 280 | 9.17.10.2.7 | **移动端开发（确认开发范围、界面需求）** |  | 25d | 2019-09-20 | 2019-10-24 | 瞿博; 孙俊林; 吴秦令; 周辉 | 928h |
| 281 | 9.17.10.2.7.1 | 沟通微信端需求 | manual | 4d | 2019-09-16 | 2019-09-19 | 瞿博; 孙俊林; 吴秦令; 周辉 | 128h |
| 283 | 9.17.10.2.8 | 上线准备及评审（基础数据是否收集准备，导入正式数据库，验证是否显示正常；系统停机维护通知；系统上线环境是否可用；是否提前申请电视，是否提前发布用户通知邮件） | manual | 8d | 2019-10-16 | 2019-10-25 | 周辉 | 64h |
| 284 | 9.17.10.2.9 | 上线交付 | manual | 1d | 2019-10-28 | 2019-10-28 | 周辉 | 8h |
| 285 | 9.17.10.2.10 | 试运行 | manual | 22d | 2019-11-01 | 2019-11-30 | 用户 | 176h |
| 286 | 9.17.10.2.11 | 项目运维交接 | manual | 11d | 2019-11-01 | 2019-11-15 |  |  |
| 287 | 9.17.10.2.12 | 项目收尾 | manual | 1d | 2019-11-30 | 2019-11-30 |  |  |
